# iBaby时间资源估计及工作包排序

Schedule from MS Project, 2020-03-16 to 2020-07-07, costs in ¥.
Microsoft

## Calendars

- 标准: Mon-Fri 08:00-12:00, 13:00-17:00; Sat-Sun off.

## Resources

| Resource | Group |
| --- | --- |
| 马增来 | 项目经理 |
| 刘钶妍 | UI/UE设计专家 |
| 陈雅楠 | 产品经理 |
| 乔子璇 | 开发人员 |
| 赵语涵 | 开发人员 |
| 颜枫桦 | 测试专家 |
| 赵语涵 | 质量专家 |

## Schedule

| ID | WBS | Task | Duration | Start | Finish | Predecessors | Total slack | Resources | Work | Cost |
| --- | --- | --- | --- | --- | --- | --- | --- | --- | --- | --- |
| 1 | 1 | **启动** | 6d | 2020-03-16 | 2020-03-24 |  | 0d |  | 88h | 22,800 |
| 2 | 1.1 | 任命项目经理 | 1d | 2020-03-16 | 2020-03-17 |  | 0d |  |  |  |
| 3 | 1.2 | 组建核心团队 | 2d | 2020-03-17 | 2020-03-19 | 2 | 1d | 马增来; 赵语涵; 刘钶妍 | 32h | 7,600 |
| 4 | 1.3 | 干系人分析 | 1d | 2020-03-19 | 2020-03-20 | 2 | 0d | 马增来 | 8h | 2,400 |
| 5 | 1.4 | 里程碑计划 | 1d | 2020-03-17 | 2020-03-18 | 2 | 2d | 马增来 | 8h | 2,400 |
| 6 | 1.5 | 制定项目章程 | 1d | 2020-03-20 | 2020-03-23 | 3, 4, 5 | 0d | 马增来 | 8h | 2,400 |
| 7 | 1.6 | 项目启动大会 | 1d | 2020-03-23 | 2020-03-24 | 6 | 0d | 马增来; 赵语涵; 陈雅楠; 刘钶妍 | 32h | 8,000 |
| 8 | 2 | **规划** | 29d? | 2020-03-24 | 2020-05-04 |  | 0d |  | 336h | 91,600 |
| 9 | 2.1 | **规划范围** | 14d? | 2020-03-24 | 2020-04-13 |  | 0d |  | 152h | 39,600 |
| 10 | 2.1.1 | 制定范围管理计划 | 1d? | 2020-03-24 | 2020-03-25 | 7 | 0d | 刘钶妍; 马增来; 陈雅楠; 赵语涵 | 32h | 8,000 |
| 11 | 2.1.2 | 制定需求说明书 | 5d | 2020-03-25 | 2020-04-01 | 10 | 0d | 陈雅楠 | 40h | 10,000 |
| 12 | 2.1.3 | 界面设计 | 3d | 2020-04-06 | 2020-04-09 | 11 | 0d | 刘钶妍 | 24h | 6,000 |
| 13 | 2.1.4 | 详细设计说明书 | 3d | 2020-04-01 | 2020-04-06 | 11 | 3d | 刘钶妍 | 24h | 6,000 |
| 14 | 2.1.5 | 范围说明书 | 2d | 2020-04-01 | 2020-04-03 | 11 | 4d | 马增来 | 16h | 4,800 |
| 15 | 2.1.6 | 创建WBS | 1d | 2020-04-09 | 2020-04-10 | 12, 13, 14 | 0d | 马增来 | 8h | 2,400 |
| 16 | 2.1.7 | 形成范围基准 | 1d | 2020-04-10 | 2020-04-13 | 15 | 0d | 马增来 | 8h | 2,400 |
| 17 | 2.2 | **规划时间** | 8d | 2020-04-13 | 2020-04-23 |  | 0d |  | 40h | 12,000 |
| 18 | 2.2.1 | 排列工作包顺序 | 1d | 2020-04-13 | 2020-04-14 | 16 | 0d | 马增来 | 8h | 2,400 |
| 19 | 2.2.2 | 估算资源 | 1d | 2020-04-14 | 2020-04-15 | 18 | 0d | 马增来 | 8h | 2,400 |
| 20 | 2.2.3 | 估算持续时间 | 1d | 2020-04-20 | 2020-04-21 | 19 | 0d | 马增来 | 8h | 2,400 |
| 21 | 2.2.4 | 制定进度计划 | 1d | 2020-04-21 | 2020-04-22 | 20 | 0d | 马增来 | 8h | 2,400 |
| 22 | 2.2.5 | 形成进度基准 | 1d | 2020-04-22 | 2020-04-23 | 21 | 0d | 马增来 | 8h | 2,400 |
| 23 | 2.3 | **规划成本** | 3d | 2020-04-23 | 2020-04-28 |  | 0d |  | 24h | 7,200 |
| 24 | 2.3.1 | 项目成本估算 | 1d | 2020-04-23 | 2020-04-24 | 22 | 0d | 马增来 | 8h | 2,400 |
| 25 | 2.3.2 | 项目预算 | 1d | 2020-04-24 | 2020-04-27 | 24 | 0d | 马增来 | 8h | 2,400 |
| 26 | 2.3.3 | 形成成本基准 | 1d | 2020-04-27 | 2020-04-28 | 25 | 0d | 马增来 | 8h | 2,400 |

| ID | WBS | Task | Type | Duration | Start | Finish | Predecessors | Total slack | Free slack | Resources | Work | Cost |
| --- | --- | --- | --- | --- | --- | --- | --- | --- | --- | --- | --- | --- |
| 27 | 2.4 | **规划质量** |  | 6d | 2020-04-13 | 2020-04-21 |  | 5d |  |  | 48h | 12,000 |
| 28 | 2.4.1 | 制定测试计划 |  | 1d | 2020-04-13 | 2020-04-14 | 16 | 5d | 0d | 赵语涵 | 8h | 2,000 |
| 29 | 2.4.2 | 制定测试用例 |  | 5d | 2020-04-14 | 2020-04-21 | 28 | 5d |  | 赵语涵 | 40h | 10,000 |
| 30 | 2.5 | **规划人力资源** |  | 2d | 2020-04-15 | 2020-04-17 |  | 7d |  |  | 16h | 4,800 |
| 31 | 2.5.1 | 制定人力资源计划 |  | 1d | 2020-04-15 | 2020-04-16 | 19 | 7d | 0d | 马增来 | 8h | 2,400 |
| 32 | 2.5.2 | 制定人员配备管理计划 |  | 1d | 2020-04-16 | 2020-04-17 | 31 | 7d | 0d | 马增来 | 8h | 2,400 |
| 33 | 2.6 | **规划沟通** |  | 1d | 2020-04-17 | 2020-04-20 |  | 10d |  |  | 8h | 2,400 |
| 34 | 2.6.1 | 制定沟通管理计划 |  | 1d | 2020-04-17 | 2020-04-20 | 32 | 10d |  | 马增来 | 8h | 2,400 |
| 35 | 2.7 | **规划采购** |  | 2d? | 2020-04-15 | 2020-04-17 |  | 11d |  |  | 16h | 4,000 |
| 36 | 2.7.1 | 自制外购分析 |  | 1d? | 2020-04-15 | 2020-04-16 | 19 | 11d | 0d | 陈雅楠 | 8h | 2,000 |
| 37 | 2.7.2 | 制定采购文件 |  | 1d? | 2020-04-16 | 2020-04-17 | 36 | 11d |  | 陈雅楠 | 8h | 2,000 |
| 38 | 2.8 | **规划风险** |  | 3d | 2020-04-28 | 2020-05-01 |  | 0d |  |  | 24h | 7,200 |
| 39 | 2.8.1 | 识别风险 |  | 1d | 2020-04-28 | 2020-04-29 | 17, 23, 27, 30 | 0d |  | 马增来 | 8h | 2,400 |
| 40 | 2.8.2 | 风险分析 |  | 1d | 2020-04-29 | 2020-04-30 | 39 | 0d |  | 马增来 | 8h | 2,400 |
| 41 | 2.8.3 | 制定风险登记册 |  | 1d | 2020-04-30 | 2020-05-01 | 40 | 0d |  | 马增来 | 8h | 2,400 |
| 42 | 2.9 | 规划整合 | milestone | 1d | 2020-05-01 | 2020-05-04 | 41 | 0d |  | 马增来 | 8h | 2,400 |
| 43 | 3 | **执行与监控** |  | 46.62d? | 2020-05-04 | 2020-07-07 |  | 0d |  |  | 882h | 193,150 |
| 44 | 3.1 | 组建项目团队 |  | 2d | 2020-05-04 | 2020-05-06 | 8 | 0d |  | 颜枫桦; 陈雅楠; 赵语涵; 刘钶妍; 乔子璇 | 80h | 17,600 |
| 45 | 3.2 | **项目执行** |  | 33.12d? | 2020-05-08 | 2020-06-24 |  | 0d |  |  | 409h | 81,800 |
| 46 | 3.2.1 | **我的模块** |  | 23d | 2020-05-08 | 2020-06-09 |  |  |  |  | 145h | 29,000 |
| 47 | 3.2.1.1 | 登录注册 |  | 3d | 2020-05-08 | 2020-05-13 | 44 | 4.75d | 0d | 乔子璇 | 24h | 4,800 |
| 48 | 3.2.1.2 | 我的收藏 |  | 2d | 2020-05-13 | 2020-05-15 | 47 | 4.75d | 0d | 乔子璇 | 16h | 3,200 |
| 49 | 3.2.1.3 | 我的订单 |  | 2d | 2020-05-15 | 2020-05-19 | 48 | 4.75d | 0d | 乔子璇 | 16h | 3,200 |
| 50 | 3.2.1.4 | 我的钱包 |  | 2d | 2020-05-19 | 2020-05-21 | 49 | 4.75d | 0d | 乔子璇 | 16h | 3,200 |
| 51 | 3.2.1.5 | 我的积分 |  | 1d? | 2020-05-21 | 2020-05-22 | 50 | 4.75d | 0d | 乔子璇 | 8h | 1,600 |
| 52 | 3.2.1.6 | 应用设置 |  | 2d | 2020-05-22 | 2020-05-26 | 51 | 4.75d | 0d | 乔子璇 | 16h | 3,200 |
| 53 | 3.2.1.7 | 意见反馈 |  | 2d | 2020-05-26 | 2020-05-28 | 52 | 4.75d | 0d | 乔子璇 | 16h | 3,200 |
| 54 | 3.2.1.8 | iBaby会员商城 |  | 4.12d | 2020-05-28 | 2020-06-03 | 53 | 4.75d | 0d | 乔子璇 | 33h | 6,600 |

| ID | WBS | Task | Type | Duration | Start | Finish | Predecessors | Total slack | Free slack | Resources | Work | Cost |
| --- | --- | --- | --- | --- | --- | --- | --- | --- | --- | --- | --- | --- |
| 55 | 3.2.2 | **故事模块** |  | 15d? | 2020-06-03 | 2020-06-24 |  | 5.62d |  |  | 120h | 24,000 |
| 56 | 3.2.2.1 | 签到 |  | 1d? | 2020-06-03 | 2020-06-04 | 54 | 5.62d | 0d | 乔子璇 | 8h | 1,600 |
| 57 | 3.2.2.2 | 搜索故事 |  | 1d? | 2020-06-04 | 2020-06-05 | 56 | 5.62d | 0d | 乔子璇 | 8h | 1,600 |
| 58 | 3.2.2.3 | 搜索历史 |  | 1d? | 2020-06-05 | 2020-06-08 | 57 | 5.62d | 0d | 乔子璇 | 8h | 1,600 |
| 59 | 3.2.2.4 | 推荐故事 |  | 2d | 2020-06-08 | 2020-06-10 | 58 | 5.62d | 0d | 乔子璇 | 16h | 3,200 |
| 60 | 3.2.2.5 | 故事分类 |  | 3d | 2020-06-10 | 2020-06-15 | 59 | 5.62d | 0d | 乔子璇 | 24h | 4,800 |
| 61 | 3.2.2.6 | 故事播放 |  | 2d | 2020-06-15 | 2020-06-17 | 60 | 5.62d | 0d | 乔子璇 | 16h | 3,200 |
| 62 | 3.2.2.7 | 收藏故事 |  | 1d? | 2020-06-17 | 2020-06-18 | 61 | 5.62d | 0d | 乔子璇 | 8h | 1,600 |
| 63 | 3.2.2.8 | 购买专辑 |  | 1d | 2020-06-18 | 2020-06-19 | 62 | 5.62d | 0d | 乔子璇 | 8h | 1,600 |
| 64 | 3.2.2.9 | 实时轮播信息 |  | 3d | 2020-06-19 | 2020-06-24 | 63 | 5.62d |  | 乔子璇 | 24h | 4,800 |
| 65 | 3.2.3 | **发现模块** |  | 20.38d? | 2020-05-08 | 2020-06-05 |  | 18.38d |  |  | 144h | 28,800 |
| 66 | 3.2.3.1 | 搜索发现 |  | 1d? | 2020-05-08 | 2020-05-11 | 44 | 18.38d | 0d | 赵语涵 | 8h | 1,600 |
| 67 | 3.2.3.2 | 有奖参与 |  | 3d | 2020-05-11 | 2020-05-14 | 66 | 18.38d | 0d | 赵语涵 | 24h | 4,800 |
| 68 | 3.2.3.3 | 活动刷新 |  | 1d? | 2020-05-14 | 2020-05-15 | 67 | 18.38d | 0d | 赵语涵 | 8h | 1,600 |
| 69 | 3.2.3.4 | 特价书籍 |  | 2d | 2020-05-15 | 2020-05-21 | 68 | 18.38d | 0d | 赵语涵 | 16h | 3,200 |
| 70 | 3.2.3.5 | 家长课堂 |  | 3d | 2020-05-21 | 2020-05-26 | 69 | 18.38d | 0d | 赵语涵 | 24h | 4,800 |
| 71 | 3.2.3.6 | 文章推荐 |  | 3d | 2020-05-26 | 2020-05-29 | 70 | 18.38d | 0d | 赵语涵 | 24h | 4,800 |
| 72 | 3.2.3.7 | 文章收藏 |  | 1d | 2020-05-29 | 2020-06-01 | 71 | 18.38d | 0d | 赵语涵 | 8h | 1,600 |
| 73 | 3.2.3.8 | 文章点赞 |  | 1d | 2020-06-01 | 2020-06-02 | 72 | 18.38d | 0d | 赵语涵 | 8h | 1,600 |
| 74 | 3.2.3.9 | 文章评论 |  | 1d | 2020-06-02 | 2020-06-03 | 73 | 18.38d | 0d | 赵语涵 | 8h | 1,600 |
| 75 | 3.2.3.10 | 文章分享 |  | 1d | 2020-06-03 | 2020-06-04 | 74 | 18.38d | 0d | 赵语涵 | 8h | 1,600 |
| 76 | 3.2.3.11 | 浏览历史 |  | 1d | 2020-06-04 | 2020-06-05 | 75 | 18.38d |  | 赵语涵 | 8h | 1,600 |
| 77 | 3.3 | **项目监控** |  | 8.88d? | 2020-05-06 | 2020-05-18 |  | 1d |  |  | 87h | 20,900 |
| 78 | 3.3.1 | 各项指标监控 | manual | 2d | 2020-05-07 | 2020-05-12 | 44 |  |  | 颜枫桦; 马增来 | 23h | 6,100 |
| 79 | 3.3.2 | 监控评审 |  | 1d | 2020-05-12 | 2020-05-13 | 78 | 38.62d | 0d | 刘钶妍; 颜枫桦; 陈雅楠; 马增来 | 32h | 8,000 |
| 80 | 3.3.3 | 变更评审 | manual | 0.12d | 2020-05-13 | 2020-05-13 | 79 |  |  |  |  |  |
| 81 | 3.3.4 | 例会 |  | 3d? | 2020-05-06 | 2020-05-18 | 44 | 35.75d |  | 陈雅楠; 颜枫桦; 乔子璇; 赵语涵 | 32h | 6,800 |

| ID | WBS | Task | Type | Duration | Start | Finish | Predecessors | Total slack | Free slack | Constraint | Resources | Work | Cost |
| --- | --- | --- | --- | --- | --- | --- | --- | --- | --- | --- | --- | --- | --- |
| 82 | 3.4 | **管理干系人** |  | 8d | 2020-05-06 | 2020-05-15 |  |  |  |  |  | 25h | 7,500 |
| 83 | 3.4.1 | 发布项目信息 | manual | 0.12d | 2020-05-06 | 2020-05-06 | 44 |  |  | finish no earlier than 2020-05-06 | 马增来 | 1h | 300 |
| 84 | 3.4.2 | 报告监控指标 | manual | 1d | 2020-05-06 | 2020-05-07 | 44 |  |  |  | 马增来 | 8h | 2,400 |
| 85 | 3.4.3 | 干系人沟通 |  | 2d | 2020-05-14 | 2020-05-15 | 44 | 36.75d |  | finish no earlier than 2020-05-15 | 马增来 | 16h | 4,800 |
| 86 | 3.5 | **团队建设** |  | 44.62d | 2020-05-06 | 2020-07-07 |  | 0d |  |  |  | 144h | 31,550 |
| 87 | 3.5.1 | 培训 |  | 10.75d | 2020-05-06 | 2020-07-07 | 44 | 0d |  |  | 刘钶妍; 颜枫桦; 陈雅楠; 赵语涵; 乔子璇 | 97h | 20,950 |
| 88 | 3.5.2 | 娱乐活动 |  | 2.88d | 2020-05-06 | 2020-05-13 | 44 | 38.75d |  |  | 刘钶妍; 颜枫桦; 陈雅楠; 赵语涵 | 31h | 7,000 |
| 89 | 3.5.3 | 沟通 |  | 1.12d | 2020-05-06 | 2020-06-29 | 44 | 6.25d |  |  | 刘钶妍; 颜枫桦; 陈雅楠; 乔子璇; 赵语涵 | 16h | 3,600 |
| 90 | 3.6 | 采购 |  | 12d | 2020-05-07 | 2020-06-01 | 44 | 26.62d |  |  | 陈雅楠 | 96h | 24,000 |
| 91 | 3.7 | 项目验收 |  | 1d | 2020-06-24 | 2020-06-25 | 45 | 5.62d | 0d |  | 刘钶妍; 颜枫桦; 陈雅楠; 马增来; 赵语涵 | 41h | 9,800 |
| 92 | 4 | **收尾** |  | 2.88d | 2020-06-25 | 2020-06-30 |  | 5.62d |  |  |  | 81h | 19,000 |
| 93 | 4.1 | 项目终验 |  | 1d | 2020-06-25 | 2020-06-26 | 91 | 7.5d |  |  | 刘钶妍; 颜枫桦; 陈雅楠; 乔子璇; 赵语涵; 马增来 | 48h | 11,200 |
| 94 | 4.2 | 结束采购 |  | 1d | 2020-06-29 | 2020-06-29 | 91 | 5.75d |  |  | 马增来 | 8h | 2,400 |
| 95 | 4.3 | 项目内部收尾 |  | 1.75d | 2020-06-26 | 2020-06-30 | 91 | 5.62d |  |  | 刘钶妍; 颜枫桦; 乔子璇; 赵语涵 | 25h | 5,400 |
