# 4-iBaby人力资源确定

Schedule from MS Project, 2020-03-16 to 2020-06-29, costs in ¥.
Microsoft

## Calendars

- 标准: Mon-Fri 08:00-12:00, 13:00-17:00; Sat-Sun off.

## Resources

| Resource | Group |
| --- | --- |
| 马增来 | 项目经理 |
| 陈雅楠 | 产品经理/需求专家 |
| 赵语涵 | 技术专家/开发人员 |
| 刘钶妍 | UI/UE专家 |
| 颜枫桦 | 测试专家/测试人员 |
| 赵语涵 | 技术专家/开发人员 |
| 赵语涵 | 技术专家/开发人员 |
| 乔子璇 | 开发人员 |
| 乔子璇 | 开发人员 |

## Schedule

| ID | WBS | Task | Duration | Start | Finish | Predecessors | Total slack | Free slack | Resources | Work | Cost |
| --- | --- | --- | --- | --- | --- | --- | --- | --- | --- | --- | --- |
| 1 | 1 | **启动** | 6d | 2020-03-16 | 2020-03-24 |  | 0d |  |  | 112h | 51,100 |
| 2 | 1.1 | 任命项目经理 | 1d | 2020-03-16 | 2020-03-17 |  | 3d |  | 马增来 | 8h | 4,300 |
| 3 | 1.2 | 组建核心团队 | 2d | 2020-03-16 | 2020-03-18 |  | 2d |  | 刘钶妍; 颜枫桦; 陈雅楠; 赵语涵; 马增来 | 40h | 17,820 |
| 4 | 1.3 | 干系人分析 | 1d | 2020-03-18 | 2020-03-19 |  | 1d |  | 马增来 | 8h | 4,300 |
| 5 | 1.4 | 里程碑计划 | 1d | 2020-03-19 | 2020-03-20 |  | 0d |  | 马增来 | 8h | 4,300 |
| 6 | 1.5 | 制定项目章程 | 1d | 2020-03-20 | 2020-03-23 | 2, 3, 4, 5 | 0d |  | 马增来 | 8h | 4,300 |
| 7 | 1.6 | 项目启动大会 | 1d | 2020-03-23 | 2020-03-24 | 6 | 0d |  | 刘钶妍; 颜枫桦; 陈雅楠; 赵语涵; 马增来 | 40h | 16,080 |
| 8 | 2 | **规划** | 29d | 2020-03-24 | 2020-05-04 |  | 0d |  |  | 304h | 141,740 |
| 9 | 2.1 | **规划范围** | 6d | 2020-03-24 | 2020-04-01 |  | 0d |  |  | 64h | 29,680 |
| 10 | 2.1.1 | 制定需求说明书 | 1d | 2020-03-24 | 2020-03-25 | 7 | 0d |  | 陈雅楠 | 8h | 2,600 |
| 11 | 2.1.2 | 界面设计 | 2d | 2020-03-25 | 2020-03-27 | 10 | 0d |  | 刘钶妍 | 16h | 5,000 |
| 12 | 2.1.3 | 详细设计说明书 | 1d | 2020-03-25 | 2020-03-26 | 10 | 1d |  | 赵语涵 | 8h | 5,000 |
| 13 | 2.1.4 | 范围说明书 | 1d | 2020-03-25 | 2020-03-26 | 10 | 1d |  | 马增来 | 8h | 4,300 |
| 14 | 2.1.5 | 创建WBS | 2d | 2020-03-27 | 2020-03-31 | 11, 12, 13 | 0d |  | 马增来 | 16h | 8,480 |
| 15 | 2.1.6 | 形成范围基准 | 1d | 2020-03-31 | 2020-04-01 | 14 | 0d |  | 马增来 | 8h | 4,300 |
| 16 | 2.2 | **规划时间** | 11d | 2020-04-01 | 2020-04-16 |  | 0d |  |  | 40h | 21,500 |
| 17 | 2.2.1 | 排列工作包顺序 | 1d | 2020-04-01 | 2020-04-02 | 15 | 0d |  | 马增来 | 8h | 4,300 |
| 18 | 2.2.2 | 估算资源 | 1d | 2020-04-02 | 2020-04-03 | 17 | 0d |  | 马增来 | 8h | 4,300 |
| 19 | 2.2.3 | 估算持续时间 | 1d | 2020-04-09 | 2020-04-10 | 18 | 6d | 0d | 马增来 | 8h | 4,300 |
| 20 | 2.2.4 | 制定进度计划 | 1d | 2020-04-10 | 2020-04-13 | 19 | 6d | 0d | 马增来 | 8h | 4,300 |
| 21 | 2.2.5 | 形成进度基准 | 1d | 2020-04-15 | 2020-04-16 | 20 | 6d | 0d | 马增来 | 8h | 4,300 |
| 22 | 2.3 | **规划成本** | 2d | 2020-04-16 | 2020-04-20 |  | 6d |  |  | 16h | 8,600 |
| 23 | 2.3.1 | 项目成本估算 | 1d | 2020-04-16 | 2020-04-17 | 21 | 6d | 0d | 马增来 | 8h | 4,300 |
| 24 | 2.3.2 | 项目预算 | 1d | 2020-04-17 | 2020-04-20 | 23 | 6d |  | 马增来 | 8h | 4,300 |

| ID | WBS | Task | Duration | Start | Finish | Predecessors | Total slack | Free slack | Resources | Work | Cost |
| --- | --- | --- | --- | --- | --- | --- | --- | --- | --- | --- | --- |
| 25 | 2.4 | **规划质量** | 7d | 2020-04-01 | 2020-04-10 |  | 12d |  |  | 56h | 15,100 |
| 26 | 2.4.1 | 制定测试计划 | 2d | 2020-04-01 | 2020-04-03 | 15 | 12d | 0d | 颜枫桦 | 16h | 4,300 |
| 27 | 2.4.2 | 制定测试用例 | 5d | 2020-04-03 | 2020-04-10 | 26 | 12d |  | 颜枫桦 | 40h | 10,800 |
| 28 | 2.5 | **规划人力资源** | 8d | 2020-04-03 | 2020-04-15 |  | 0d |  |  | 32h | 15,920 |
| 29 | 2.5.1 | 制定人力资源计划 | 2d | 2020-04-03 | 2020-04-07 | 18 | 0d |  | 马增来 | 16h | 7,960 |
| 30 | 2.5.2 | 制定人员配备管理计划 | 2d | 2020-04-13 | 2020-04-15 | 29 | 0d |  | 马增来 | 16h | 7,960 |
| 31 | 2.6 | **规划沟通** | 2d | 2020-04-24 | 2020-04-28 |  | 0d |  |  | 16h | 7,960 |
| 32 | 2.6.1 | 制定沟通管理计划 | 2d | 2020-04-24 | 2020-04-28 | 30 | 0d |  | 马增来 | 16h | 7,960 |
| 33 | 2.7 | **规划采购** | 13d | 2020-04-07 | 2020-04-24 |  | 1.88d |  |  | 48h | 25,780 |
| 34 | 2.7.1 | 自制外购分析 | 2d | 2020-04-07 | 2020-04-09 | 18 | 1.88d | 0d | 马增来 | 16h | 7,960 |
| 35 | 2.7.2 | 制定采购文件 | 4d | 2020-04-20 | 2020-04-24 | 34 | 2d |  | 马增来 | 32h | 17,820 |
| 36 | 2.8 | **规划风险** | 3d | 2020-04-28 | 2020-05-01 |  | 0d |  |  | 24h | 12,900 |
| 37 | 2.8.1 | 识别风险 | 1d | 2020-04-28 | 2020-04-29 | 9, 16, 22, 25, 28, 31, 33 | 0d |  | 马增来 | 8h | 4,300 |
| 38 | 2.8.2 | 风险分析 | 1d | 2020-04-29 | 2020-04-30 | 37 | 0d |  | 马增来 | 8h | 4,300 |
| 39 | 2.8.3 | 制定风险登记册 | 1d | 2020-04-30 | 2020-05-01 | 38 | 0d |  | 马增来 | 8h | 4,300 |
| 40 | 2.9 | 规划整合 | 1d | 2020-05-01 | 2020-05-04 | 39 | 0d |  | 马增来 | 8h | 4,300 |
| 41 | 3 | **执行与监控** | 38d | 2020-05-04 | 2020-06-25 |  | 0d |  |  | 968h | 364,180 |
| 42 | 3.1 | 组建项目团队 | 3d | 2020-05-04 | 2020-05-07 | 8 | 0d |  | 刘钶妍; 颜枫桦; 陈雅楠; 赵语涵; 马增来 | 120h | 4,300 |
| 43 | 3.2 | **项目执行** | 17d | 2020-05-07 | 2020-06-01 |  | 0d |  |  | 264h | 98,600 |
| 44 | 3.2.1 | **故事模块** | 12d | 2020-05-08 | 2020-05-26 |  | 4d |  |  | 64h | 23,000 |
| 45 | 3.2.1.1 | 浏览故事 | 1d | 2020-05-21 | 2020-05-22 | 46 | 6d |  | 赵语涵 | 8h | 3,000 |
| 46 | 3.2.1.2 | 搜索故事 | 1d | 2020-05-08 | 2020-05-11 | 63 | 4d | 0d | 赵语涵 | 8h | 3,000 |
| 47 | 3.2.1.3 | 推荐故事 | 3d | 2020-05-15 | 2020-05-20 | 63 | 8d |  | 赵语涵 | 24h | 8,000 |
| 48 | 3.2.1.4 | 播放故事 | 1d | 2020-05-22 | 2020-05-25 | 46 | 5d |  | 赵语涵 | 8h | 3,000 |
| 49 | 3.2.1.5 | 点赞故事 | 1d | 2020-05-25 | 2020-05-26 | 46 | 4d |  | 赵语涵 | 8h | 3,000 |
| 50 | 3.2.1.6 | 收藏故事 | 1d | 2020-05-11 | 2020-05-12 | 46 | 13d | 7d | 赵语涵 | 8h | 3,000 |

| ID | WBS | Task | Duration | Start | Finish | Predecessors | Total slack | Free slack | Resources | Work | Cost |
| --- | --- | --- | --- | --- | --- | --- | --- | --- | --- | --- | --- |
| 51 | 3.2.2 | **发现模块** | 16d | 2020-05-08 | 2020-06-01 |  | 0d |  |  | 104h | 39,600 |
| 52 | 3.2.2.1 | 搜索活动或书籍 | 1d | 2020-05-19 | 2020-05-20 | 63 | 0d |  | 赵语涵 | 8h | 3,000 |
| 53 | 3.2.2.2 | 家长课堂 | 2d | 2020-05-22 | 2020-05-26 | 63 | 4d |  | 赵语涵 | 16h | 6,200 |
| 54 | 3.2.2.3 | 播放视频 | 2d | 2020-05-26 | 2020-05-28 | 63 | 2d |  | 赵语涵 | 16h | 6,200 |
| 55 | 3.2.2.4 | 搜索商品 | 1d | 2020-05-08 | 2020-05-11 | 63 | 5d | 0d | 赵语涵 | 8h | 3,000 |
| 56 | 3.2.2.5 | 购物车 | 2d | 2020-05-12 | 2020-05-14 | 55 | 5d | 0d | 赵语涵 | 16h | 6,200 |
| 57 | 3.2.2.6 | 下单 | 1d | 2020-05-21 | 2020-05-22 | 56 | 5d | 0d | 赵语涵 | 8h | 3,000 |
| 58 | 3.2.2.7 | 阅读文章 | 1d | 2020-05-11 | 2020-05-12 | 63 | 1d | 0d | 赵语涵 | 8h | 3,000 |
| 59 | 3.2.2.8 | 点赞文章 | 1d | 2020-05-28 | 2020-05-29 | 58 | 1d |  | 赵语涵 | 8h | 3,000 |
| 60 | 3.2.2.9 | 收藏文章 | 1d | 2020-05-20 | 2020-05-21 | 58 | 6d | 0d | 赵语涵 | 8h | 3,000 |
| 61 | 3.2.2.10 | 报名活动 | 1d | 2020-05-29 | 2020-06-01 | 52 | 0d |  | 赵语涵 | 8h | 3,000 |
| 62 | 3.2.3 | **我的模块** | 15d | 2020-05-07 | 2020-05-28 |  | 0d |  |  | 88h | 33,200 |
| 63 | 3.2.3.1 | 登录注册 | 1d | 2020-05-07 | 2020-05-08 | 42 | 0d |  | 乔子璇 | 8h | 3,000 |
| 64 | 3.2.3.2 | 设置个人信息 | 1d | 2020-05-19 | 2020-05-20 | 63 | 8d |  | 乔子璇 | 8h | 3,000 |
| 65 | 3.2.3.3 | 查看收藏 | 1d | 2020-05-21 | 2020-05-22 | 50, 60 | 6d |  | 乔子璇 | 8h | 3,000 |
| 66 | 3.2.3.4 | 查看订单 | 1d | 2020-05-22 | 2020-05-25 | 57 | 5d |  | 乔子璇 | 8h | 3,000 |
| 67 | 3.2.3.5 | 查看积分 | 1d | 2020-05-08 | 2020-05-11 | 63 | 13d | 0d | 乔子璇 | 8h | 3,000 |
| 68 | 3.2.3.6 | 积分商城 | 2d | 2020-05-11 | 2020-05-13 | 67 | 13d |  | 乔子璇 | 16h | 6,200 |
| 69 | 3.2.3.7 | 查看钱包 | 1d | 2020-05-20 | 2020-05-21 | 63 | 7d |  | 乔子璇 | 8h | 3,000 |
| 70 | 3.2.3.8 | 意见反馈 | 1d | 2020-05-25 | 2020-05-26 | 63 | 4d |  | 乔子璇 | 8h | 3,000 |
| 71 | 3.2.3.9 | 应用设置 | 1d | 2020-05-26 | 2020-05-27 | 63 | 3d |  | 乔子璇 | 8h | 3,000 |
| 72 | 3.2.3.10 | 退出账户 | 1d | 2020-05-27 | 2020-05-28 | 63 | 2d |  | 乔子璇 | 8h | 3,000 |
| 73 | 3.2.4 | **公共模块** | 1d | 2020-05-20 | 2020-05-21 |  | 7d |  |  | 8h | 2,800 |
| 74 | 3.2.4.1 | 签到 | 1d | 2020-05-20 | 2020-05-21 | 63 | 7d |  | 赵语涵 | 8h | 2,800 |

| ID | WBS | Task | Duration | Start | Finish | Predecessors | Total slack | Free slack | Resources | Work | Cost |
| --- | --- | --- | --- | --- | --- | --- | --- | --- | --- | --- | --- |
| 75 | 3.3 | **项目监控** | 27d | 2020-05-07 | 2020-06-15 |  | 10d |  |  | 120h | 60,200 |
| 76 | 3.3.1 | 各项指标监控 | 1d | 2020-05-07 | 2020-05-08 | 42 | 34d | 0d | 马增来; 颜枫桦 | 16h | 6,200 |
| 77 | 3.3.2 | 监控评审 | 1d | 2020-05-08 | 2020-05-11 | 76 | 34d | 0d | 赵语涵; 马增来 | 16h | 12,000 |
| 78 | 3.3.3 | 变更评审 | 1d | 2020-05-11 | 2020-05-12 | 77 | 34d |  | 赵语涵; 马增来 | 16h | 12,000 |
| 79 | 3.3.4 | 例会 | 4d | 2020-05-07 | 2020-06-15 | 42 | 10d |  | 刘钶妍; 颜枫桦; 陈雅楠; 赵语涵; 乔子璇; 马增来 | 72h | 30,000 |
| 80 | 3.4 | **管理干系人** | 3d | 2020-06-15 | 2020-06-18 |  | 7d |  |  | 24h | 15,000 |
| 81 | 3.4.1 | 发布项目信息 | 1d | 2020-06-15 | 2020-06-16 | 42 | 9d |  | 马增来 | 8h | 5,000 |
| 82 | 3.4.2 | 报告监控指标 | 1d | 2020-06-16 | 2020-06-17 | 42 | 8d |  | 马增来 | 8h | 5,000 |
| 83 | 3.4.3 | 干系人沟通 | 1d | 2020-06-17 | 2020-06-18 | 42 | 7d |  | 马增来 | 8h | 5,000 |
| 84 | 3.5 | **团队建设** | 32d | 2020-05-08 | 2020-06-23 |  | 4d |  |  | 216h | 90,000 |
| 85 | 3.5.1 | 培训 | 5d | 2020-05-08 | 2020-06-19 | 42 | 6d |  | 刘钶妍; 颜枫桦; 赵语涵; 乔子璇; 陈雅楠; 马增来 | 72h | 30,000 |
| 86 | 3.5.2 | 娱乐活动 | 5d | 2020-05-11 | 2020-06-22 | 42 | 5d |  | 刘钶妍; 颜枫桦; 陈雅楠; 赵语涵; 乔子璇; 马增来 | 72h | 30,000 |
| 87 | 3.5.3 | 沟通 | 5d | 2020-05-12 | 2020-06-23 | 42 | 4d |  | 刘钶妍; 颜枫桦; 陈雅楠; 赵语涵; 乔子璇; 马增来 | 72h | 30,000 |
| 88 | 3.6 | 采购 | 23d | 2020-05-12 | 2020-06-25 | 42 | 2d |  | 马增来 | 184h | 80,000 |
| 89 | 3.7 | 项目验收 | 1d | 2020-06-01 | 2020-06-02 | 43 | 0d |  | 刘钶妍; 颜枫桦; 陈雅楠; 赵语涵; 马增来 | 40h | 16,080 |
| 90 | 4 | **收尾** | 19d | 2020-06-02 | 2020-06-29 |  | 0d |  |  | 120h | 48,000 |
| 91 | 4.1 | 项目终验 | 1d | 2020-06-02 | 2020-06-03 | 89 | 18d |  | 刘钶妍; 颜枫桦; 陈雅楠; 赵语涵; 马增来 | 40h | 15,000 |
| 92 | 4.2 | 结束采购 | 1d | 2020-06-25 | 2020-06-26 | 89 | 1d |  | 马增来 | 8h | 5,000 |
| 93 | 4.3 | 项目内部收尾 | 3d | 2020-06-02 | 2020-06-29 | 89 | 0d |  | 刘钶妍; 颜枫桦; 陈雅楠; 赵语涵; 乔子璇; 马增来 | 72h | 28,000 |
