# 时间规划

Schedule from MS Project, 2020-03-16 to 2020-06-29, costs in ¥.
Microsoft

## Calendars

- 标准: Mon-Fri 08:00-12:00, 13:00-17:00; Sat-Sun off.

## Resources

| Resource |
| --- |
| 项目经理 |
| 产品经理 |
| 技术专家 |
| UI/UE设计师 |
| 测试专家 |
| 程序员1 |
| 程序员2 |
| 程序员3 |
| 程序员4 |

## Schedule

| ID | WBS | Task | Duration | Start | Finish | Predecessors | Total slack | Free slack | Resources | Work | Cost |
| --- | --- | --- | --- | --- | --- | --- | --- | --- | --- | --- | --- |
| 1 | 1 | **启动** | 6d | 2020-03-16 | 2020-03-24 |  | 0d |  |  | 112h | 49,120 |
| 2 | 1.1 | 任命项目经理 | 1d | 2020-03-16 | 2020-03-17 |  | 3d |  | 项目经理 | 8h | 4,240 |
| 3 | 1.2 | 组建核心团队 | 2d | 2020-03-16 | 2020-03-18 |  | 2d |  | UI/UE设计师; 测试专家; 产品经理; 技术专家; 项目经理 | 40h | 16,080 |
| 4 | 1.3 | 干系人分析 | 1d | 2020-03-18 | 2020-03-19 |  | 1d |  | 项目经理 | 8h | 4,240 |
| 5 | 1.4 | 里程碑计划 | 1d | 2020-03-19 | 2020-03-20 |  | 0d |  | 项目经理 | 8h | 4,240 |
| 6 | 1.5 | 制定项目章程 | 1d | 2020-03-20 | 2020-03-23 | 2, 3, 4, 5 | 0d |  | 项目经理 | 8h | 4,240 |
| 7 | 1.6 | 项目启动大会 | 1d | 2020-03-23 | 2020-03-24 | 6 | 0d |  | UI/UE设计师; 测试专家; 产品经理; 技术专家; 项目经理 | 40h | 16,080 |
| 8 | 2 | **规划** | 29d | 2020-03-24 | 2020-05-04 |  | 0d |  |  | 304h | 142,160 |
| 9 | 2.1 | **规划范围** | 6d | 2020-03-24 | 2020-04-01 |  | 0d |  |  | 64h | 28,960 |
| 10 | 2.1.1 | 制定需求说明书 | 1d | 2020-03-24 | 2020-03-25 | 7 | 0d |  | 产品经理 | 8h | 2,400 |
| 11 | 2.1.2 | 界面设计 | 2d | 2020-03-25 | 2020-03-27 | 10 | 0d |  | UI/UE设计师 | 16h | 4,800 |
| 12 | 2.1.3 | 详细设计说明书 | 1d | 2020-03-25 | 2020-03-26 | 10 | 1d |  | 技术专家 | 8h | 4,800 |
| 13 | 2.1.4 | 范围说明书 | 1d | 2020-03-25 | 2020-03-26 | 10 | 1d |  | 项目经理 | 8h | 4,240 |
| 14 | 2.1.5 | 创建WBS | 2d | 2020-03-27 | 2020-03-31 | 11, 12, 13 | 0d |  | 项目经理 | 16h | 8,480 |
| 15 | 2.1.6 | 形成范围基准 | 1d | 2020-03-31 | 2020-04-01 | 14 | 0d |  | 项目经理 | 8h | 4,240 |
| 16 | 2.2 | **规划时间** | 11d | 2020-04-01 | 2020-04-16 |  | 0d |  |  | 40h | 21,200 |
| 17 | 2.2.1 | 排列工作包顺序 | 1d | 2020-04-01 | 2020-04-02 | 15 | 0d |  | 项目经理 | 8h | 4,240 |
| 18 | 2.2.2 | 估算资源 | 1d | 2020-04-02 | 2020-04-03 | 17 | 0d |  | 项目经理 | 8h | 4,240 |
| 19 | 2.2.3 | 估算持续时间 | 1d | 2020-04-09 | 2020-04-10 | 18 | 6d | 0d | 项目经理 | 8h | 4,240 |
| 20 | 2.2.4 | 制定进度计划 | 1d | 2020-04-10 | 2020-04-13 | 19 | 6d | 0d | 项目经理 | 8h | 4,240 |
| 21 | 2.2.5 | 形成进度基准 | 1d | 2020-04-15 | 2020-04-16 | 20 | 6d | 0d | 项目经理 | 8h | 4,240 |
| 22 | 2.3 | **规划成本** | 2d | 2020-04-16 | 2020-04-20 |  | 6d |  |  | 16h | 8,480 |
| 23 | 2.3.1 | 项目成本估算 | 1d | 2020-04-16 | 2020-04-17 | 21 | 6d | 0d | 项目经理 | 8h | 4,240 |
| 24 | 2.3.2 | 项目预算 | 1d | 2020-04-17 | 2020-04-20 | 23 | 6d |  | 项目经理 | 8h | 4,240 |

| ID | WBS | Task | Duration | Start | Finish | Predecessors | Total slack | Free slack | Resources | Work | Cost |
| --- | --- | --- | --- | --- | --- | --- | --- | --- | --- | --- | --- |
| 25 | 2.4 | **规划质量** | 7d | 2020-04-01 | 2020-04-10 |  | 12d |  |  | 56h | 15,680 |
| 26 | 2.4.1 | 制定测试计划 | 2d | 2020-04-01 | 2020-04-03 | 15 | 12d | 0d | 测试专家 | 16h | 4,480 |
| 27 | 2.4.2 | 制定测试用例 | 5d | 2020-04-03 | 2020-04-10 | 26 | 12d |  | 测试专家 | 40h | 11,200 |
| 28 | 2.5 | **规划人力资源** | 8d | 2020-04-03 | 2020-04-15 |  | 0d |  |  | 32h | 16,960 |
| 29 | 2.5.1 | 制定人力资源计划 | 2d | 2020-04-03 | 2020-04-07 | 18 | 0d |  | 项目经理 | 16h | 8,480 |
| 30 | 2.5.2 | 制定人员配备管理计划 | 2d | 2020-04-13 | 2020-04-15 | 29 | 0d |  | 项目经理 | 16h | 8,480 |
| 31 | 2.6 | **规划沟通** | 2d | 2020-04-24 | 2020-04-28 |  | 0d |  |  | 16h | 8,480 |
| 32 | 2.6.1 | 制定沟通管理计划 | 2d | 2020-04-24 | 2020-04-28 | 30 | 0d |  | 项目经理 | 16h | 8,480 |
| 33 | 2.7 | **规划采购** | 13d | 2020-04-07 | 2020-04-24 |  | 1.88d |  |  | 48h | 25,440 |
| 34 | 2.7.1 | 自制外购分析 | 2d | 2020-04-07 | 2020-04-09 | 18 | 1.88d | 0d | 项目经理 | 16h | 8,480 |
| 35 | 2.7.2 | 制定采购文件 | 4d | 2020-04-20 | 2020-04-24 | 34 | 2d |  | 项目经理 | 32h | 16,960 |
| 36 | 2.8 | **规划风险** | 3d | 2020-04-28 | 2020-05-01 |  | 0d |  |  | 24h | 12,720 |
| 37 | 2.8.1 | 识别风险 | 1d | 2020-04-28 | 2020-04-29 | 9, 16, 22, 25, 28, 31, 33 | 0d |  | 项目经理 | 8h | 4,240 |
| 38 | 2.8.2 | 风险分析 | 1d | 2020-04-29 | 2020-04-30 | 37 | 0d |  | 项目经理 | 8h | 4,240 |
| 39 | 2.8.3 | 制定风险登记册 | 1d | 2020-04-30 | 2020-05-01 | 38 | 0d |  | 项目经理 | 8h | 4,240 |
| 40 | 2.9 | 规划整合 | 1d | 2020-05-01 | 2020-05-04 | 39 | 0d |  | 项目经理 | 8h | 4,240 |
| 41 | 3 | **执行与监控** | 38d | 2020-05-04 | 2020-06-25 |  | 0d |  |  | 968h | 400,640 |
| 42 | 3.1 | 组建项目团队 | 3d | 2020-05-04 | 2020-05-07 | 8 | 0d |  | UI/UE设计师; 测试专家; 产品经理; 技术专家; 项目经理 | 120h | 48,240 |
| 43 | 3.2 | **项目执行** | 17d | 2020-05-07 | 2020-06-01 |  | 0d |  |  | 264h | 92,400 |
| 44 | 3.2.1 | **故事模块** | 12d | 2020-05-08 | 2020-05-26 |  | 4d |  |  | 64h | 22,400 |
| 45 | 3.2.1.1 | 浏览故事 | 1d | 2020-05-21 | 2020-05-22 | 46 | 6d |  | 程序员1 | 8h | 2,800 |
| 46 | 3.2.1.2 | 搜索故事 | 1d | 2020-05-08 | 2020-05-11 | 63 | 4d | 0d | 程序员1 | 8h | 2,800 |
| 47 | 3.2.1.3 | 推荐故事 | 3d | 2020-05-15 | 2020-05-20 | 63 | 8d |  | 程序员1 | 24h | 8,400 |
| 48 | 3.2.1.4 | 播放故事 | 1d | 2020-05-22 | 2020-05-25 | 46 | 5d |  | 程序员1 | 8h | 2,800 |
| 49 | 3.2.1.5 | 点赞故事 | 1d | 2020-05-25 | 2020-05-26 | 46 | 4d |  | 程序员1 | 8h | 2,800 |
| 50 | 3.2.1.6 | 收藏故事 | 1d | 2020-05-11 | 2020-05-12 | 46 | 13d | 7d | 程序员1 | 8h | 2,800 |

| ID | WBS | Task | Duration | Start | Finish | Predecessors | Total slack | Free slack | Resources | Work | Cost |
| --- | --- | --- | --- | --- | --- | --- | --- | --- | --- | --- | --- |
| 51 | 3.2.2 | **发现模块** | 16d | 2020-05-08 | 2020-06-01 |  | 0d |  |  | 104h | 36,400 |
| 52 | 3.2.2.1 | 搜索活动或书籍 | 1d | 2020-05-19 | 2020-05-20 | 63 | 0d |  | 程序员2 | 8h | 2,800 |
| 53 | 3.2.2.2 | 家长课堂 | 2d | 2020-05-22 | 2020-05-26 | 63 | 4d |  | 程序员2 | 16h | 5,600 |
| 54 | 3.2.2.3 | 播放视频 | 2d | 2020-05-26 | 2020-05-28 | 63 | 2d |  | 程序员2 | 16h | 5,600 |
| 55 | 3.2.2.4 | 搜索商品 | 1d | 2020-05-08 | 2020-05-11 | 63 | 5d | 0d | 程序员2 | 8h | 2,800 |
| 56 | 3.2.2.5 | 购物车 | 2d | 2020-05-12 | 2020-05-14 | 55 | 5d | 0d | 程序员2 | 16h | 5,600 |
| 57 | 3.2.2.6 | 下单 | 1d | 2020-05-21 | 2020-05-22 | 56 | 5d | 0d | 程序员2 | 8h | 2,800 |
| 58 | 3.2.2.7 | 阅读文章 | 1d | 2020-05-11 | 2020-05-12 | 63 | 1d | 0d | 程序员2 | 8h | 2,800 |
| 59 | 3.2.2.8 | 点赞文章 | 1d | 2020-05-28 | 2020-05-29 | 58 | 1d |  | 程序员2 | 8h | 2,800 |
| 60 | 3.2.2.9 | 收藏文章 | 1d | 2020-05-20 | 2020-05-21 | 58 | 6d | 0d | 程序员2 | 8h | 2,800 |
| 61 | 3.2.2.10 | 报名活动 | 1d | 2020-05-29 | 2020-06-01 | 52 | 0d |  | 程序员2 | 8h | 2,800 |
| 62 | 3.2.3 | **我的模块** | 15d | 2020-05-07 | 2020-05-28 |  | 0d |  |  | 88h | 30,800 |
| 63 | 3.2.3.1 | 登录注册 | 1d | 2020-05-07 | 2020-05-08 | 42 | 0d |  | 程序员3 | 8h | 2,800 |
| 64 | 3.2.3.2 | 设置个人信息 | 1d | 2020-05-19 | 2020-05-20 | 63 | 8d |  | 程序员3 | 8h | 2,800 |
| 65 | 3.2.3.3 | 查看收藏 | 1d | 2020-05-21 | 2020-05-22 | 50, 60 | 6d |  | 程序员3 | 8h | 2,800 |
| 66 | 3.2.3.4 | 查看订单 | 1d | 2020-05-22 | 2020-05-25 | 57 | 5d |  | 程序员3 | 8h | 2,800 |
| 67 | 3.2.3.5 | 查看积分 | 1d | 2020-05-08 | 2020-05-11 | 63 | 13d | 0d | 程序员3 | 8h | 2,800 |
| 68 | 3.2.3.6 | 积分商城 | 2d | 2020-05-11 | 2020-05-13 | 67 | 13d |  | 程序员3 | 16h | 5,600 |
| 69 | 3.2.3.7 | 查看钱包 | 1d | 2020-05-20 | 2020-05-21 | 63 | 7d |  | 程序员3 | 8h | 2,800 |
| 70 | 3.2.3.8 | 意见反馈 | 1d | 2020-05-25 | 2020-05-26 | 63 | 4d |  | 程序员3 | 8h | 2,800 |
| 71 | 3.2.3.9 | 应用设置 | 1d | 2020-05-26 | 2020-05-27 | 63 | 3d |  | 程序员3 | 8h | 2,800 |
| 72 | 3.2.3.10 | 退出账户 | 1d | 2020-05-27 | 2020-05-28 | 63 | 2d |  | 程序员3 | 8h | 2,800 |
| 73 | 3.2.4 | **公共模块** | 1d | 2020-05-20 | 2020-05-21 |  | 7d |  |  | 8h | 2,800 |
| 74 | 3.2.4.1 | 签到 | 1d | 2020-05-20 | 2020-05-21 | 63 | 7d |  | 程序员1 | 8h | 2,800 |

| ID | WBS | Task | Duration | Start | Finish | Predecessors | Total slack | Free slack | Resources | Work | Cost |
| --- | --- | --- | --- | --- | --- | --- | --- | --- | --- | --- | --- |
| 75 | 3.3 | **项目监控** | 27d | 2020-05-07 | 2020-06-15 |  | 10d |  |  | 120h | 51,840 |
| 76 | 3.3.1 | 各项指标监控 | 1d | 2020-05-07 | 2020-05-08 | 42 | 34d | 0d | 项目经理; 测试专家 | 16h | 6,480 |
| 77 | 3.3.2 | 监控评审 | 1d | 2020-05-08 | 2020-05-11 | 76 | 34d | 0d | 技术专家; 项目经理 | 16h | 9,040 |
| 78 | 3.3.3 | 变更评审 | 1d | 2020-05-11 | 2020-05-12 | 77 | 34d |  | 技术专家; 项目经理 | 16h | 9,040 |
| 79 | 3.3.4 | 例会 | 4d | 2020-05-07 | 2020-06-15 | 42 | 10d |  | UI/UE设计师; 测试专家; 产品经理; 程序员1; 程序员2; 程序员3; 程序员4; 技术专家; 项目经理 | 72h | 27,280 |
| 80 | 3.4 | **管理干系人** | 3d | 2020-06-15 | 2020-06-18 |  | 7d |  |  | 24h | 12,720 |
| 81 | 3.4.1 | 发布项目信息 | 1d | 2020-06-15 | 2020-06-16 | 42 | 9d |  | 项目经理 | 8h | 4,240 |
| 82 | 3.4.2 | 报告监控指标 | 1d | 2020-06-16 | 2020-06-17 | 42 | 8d |  | 项目经理 | 8h | 4,240 |
| 83 | 3.4.3 | 干系人沟通 | 1d | 2020-06-17 | 2020-06-18 | 42 | 7d |  | 项目经理 | 8h | 4,240 |
| 84 | 3.5 | **团队建设** | 32d | 2020-05-08 | 2020-06-23 |  | 4d |  |  | 216h | 81,840 |
| 85 | 3.5.1 | 培训 | 5d | 2020-05-08 | 2020-06-19 | 42 | 6d |  | UI/UE设计师; 测试专家; 程序员1; 程序员2; 程序员3; 程序员4; 技术专家; 产品经理; 项目经理 | 72h | 27,280 |
| 86 | 3.5.2 | 娱乐活动 | 5d | 2020-05-11 | 2020-06-22 | 42 | 5d |  | UI/UE设计师; 测试专家; 产品经理; 程序员1; 程序员2; 程序员3; 程序员4; 技术专家; 项目经理 | 72h | 27,280 |
| 87 | 3.5.3 | 沟通 | 5d | 2020-05-12 | 2020-06-23 | 42 | 4d |  | UI/UE设计师; 测试专家; 产品经理; 程序员1; 程序员2; 程序员3; 程序员4; 技术专家; 项目经理 | 72h | 27,280 |
| 88 | 3.6 | 采购 | 23d | 2020-05-12 | 2020-06-25 | 42 | 2d |  | 项目经理 | 184h | 97,520 |
| 89 | 3.7 | 项目验收 | 1d | 2020-06-01 | 2020-06-02 | 43 | 0d |  | UI/UE设计师; 测试专家; 产品经理; 技术专家; 项目经理 | 40h | 16,080 |
| 90 | 4 | **收尾** | 19d | 2020-06-02 | 2020-06-29 |  | 0d |  |  | 120h | 47,600 |
| 91 | 4.1 | 项目终验 | 1d | 2020-06-02 | 2020-06-03 | 89 | 18d |  | UI/UE设计师; 测试专家; 产品经理; 技术专家; 项目经理 | 40h | 16,080 |
| 92 | 4.2 | 结束采购 | 1d | 2020-06-25 | 2020-06-26 | 89 | 1d |  | 项目经理 | 8h | 4,240 |
| 93 | 4.3 | 项目内部收尾 | 3d | 2020-06-02 | 2020-06-29 | 89 | 0d |  | UI/UE设计师; 测试专家; 产品经理; 程序员1; 程序员2; 程序员3; 程序员4; 技术专家; 项目经理 | 72h | 27,280 |
